# NeuGantt

Schedule from MS Project, 2016-08-30 to 2016-10-03.

## Calendars

- Standard: Mon-Fri 08:00-12:00, 13:00-17:00; Sat-Sun off.

## Resources

| Resource |
| --- |
| LN |
| SS |

## Schedule

| ID | WBS | Task | Duration | Start | Finish | Predecessors | Total slack | Free slack | Constraint | Resources | Work |
| --- | --- | --- | --- | --- | --- | --- | --- | --- | --- | --- | --- |
| 1 | 1 | **Vorbereitung** | 2.12d | 2016-08-30 08:00 | 2016-09-01 09:00 |  | 18.81d |  |  |  | 31h |
| 2 | 1.1 | Idee | 0.25d | 2016-08-30 08:00 | 2016-08-30 10:00 |  | 16.35d | 0d |  | LN; SS | 4h |
| 3 | 1.2 | Ideensammlung | 0.38d | 2016-08-30 10:00 | 2016-08-30 14:00 | 2 | 18.81d | 0d |  | LN; SS | 6h |
| 4 | 1.3 | Besprechen der Ideen | 0.12d | 2016-08-30 14:00 | 2016-08-30 15:00 | 3 | 18.81d | 0d |  | LN; SS | 2h |
| 5 | 1.4 | Recherche über KanBan | 0.38d | 2016-08-30 15:00 | 2016-08-31 09:00 | 4 | 18.81d | 0d |  | LN; SS | 4h |
| 6 | 1.5 | **Recherche über Technologien** | 1d | 2016-08-31 09:00 | 2016-09-01 09:00 |  | 18.81d |  |  |  | 15h |
| 7 | 1.5.1 | UWP | 0.5d | 2016-08-31 09:00 | 2016-08-31 14:00 | 5 | 22.88d |  |  | SS; LN | 5h |
| 8 | 1.5.2 | .NET Core | 0.5d | 2016-08-31 09:00 | 2016-08-31 14:00 | 5 | 18.81d | 0d |  | LN; SS | 5h |
| 9 | 1.5.3 | SQLite | 0.5d | 2016-08-31 14:00 | 2016-09-01 09:00 | 8 | 18.81d | 0d |  | LN; SS | 5h |
| 10 | 2 | **Workshop** | 23d | 2016-08-30 08:00 | 2016-09-29 17:00 |  | 1.5d |  |  |  | 103h |
| 11 | 2.1 | Workshop 1 | 1d | 2016-08-30 08:00 | 2016-08-30 17:00 |  | 23.5d |  |  | LN; SS | 7h |
| 12 | 2.2 | Workshop 2 | 1d | 2016-09-01 08:00 | 2016-09-01 17:00 |  | 21.5d |  | start no earlier than 2016-09-01 08:00 | LN; SS | 15h |
| 13 | 2.3 | Workshop 3 | 1d | 2016-09-08 08:00 | 2016-09-08 17:00 |  | 16.5d |  | start no earlier than 2016-09-08 08:00 | LN; SS | 15h |
| 14 | 2.4 | Workshop 4 | 1d | 2016-09-13 08:00 | 2016-09-13 17:00 |  | 13.5d |  | start no earlier than 2016-09-13 08:00 | LN; SS | 7h |
| 15 | 2.5 | Workshop 5 | 1d | 2016-09-15 08:00 | 2016-09-15 17:00 |  | 3.88d | 0d | start no earlier than 2016-09-15 08:00 | LN; SS | 15h |
| 16 | 2.6 | Workshop 6 | 1d | 2016-09-20 08:00 | 2016-09-20 17:00 |  | 2.38d | 0.25d | start no earlier than 2016-09-20 08:00 | LN; SS | 7h |
| 17 | 2.7 | Workshop 7 | 1d | 2016-09-22 08:00 | 2016-09-22 17:00 |  | 1.12d | 0d | start no earlier than 2016-09-22 08:00 | LN; SS | 15h |
| 18 | 2.8 | Workshop 8 | 1d | 2016-09-27 08:00 | 2016-09-27 17:00 |  | 0d |  | start no earlier than 2016-09-27 08:00 | LN; SS | 7h |
| 19 | 2.9 | Workshop 9 | 1d | 2016-09-29 08:00 | 2016-09-29 17:00 |  | 1.5d |  | start no earlier than 2016-09-29 08:00 | LN; SS | 15h |
| 20 | 3 | **Meeting** | 16.25d | 2016-09-06 08:00 | 2016-09-28 10:00 |  | 3.25d |  |  |  | 16h |
| 21 | 3.1 | Meeting 0 | 1d | 2016-09-06 08:00 | 2016-09-06 17:00 |  | 17.5d |  | start no earlier than 2016-09-06 08:00 | LN; SS | 4h |
| 22 | 3.2 | Meeting 1 | 2h | 2016-09-14 08:00 | 2016-09-14 10:00 |  | 12.25d |  | start no earlier than 2016-09-14 08:00 | LN; SS | 4h |
| 23 | 3.3 | Meeting 2 | 2h | 2016-09-21 08:00 | 2016-09-21 10:00 |  | 7.25d |  | start no earlier than 2016-09-21 08:00 | LN; SS | 4h |
| 24 | 3.4 | Meeting 3 | 2h | 2016-09-28 08:00 | 2016-09-28 10:00 |  | 2.25d |  | start no earlier than 2016-09-28 08:00 | LN; SS | 4h |

| ID | WBS | Task | Duration | Start | Finish | Predecessors | Total slack | Free slack | Resources | Work |
| --- | --- | --- | --- | --- | --- | --- | --- | --- | --- | --- |
| 25 | 4 | **Organisatorisches** | 1.62d | 2016-09-01 09:00 | 2016-09-02 15:00 |  | 18.81d |  |  | 20h |
| 26 | 4.1 | PSP erstellen | 0.75d | 2016-09-01 09:00 | 2016-09-01 16:00 | 9 | 18.81d | 0d | LN; SS | 8h |
| 27 | 4.2 | Beschreibung der Arbeitspakete | 0.5d | 2016-09-01 16:00 | 2016-09-02 11:00 | 26 | 18.81d | 0d | LN; SS | 8h |
| 28 | 4.3 | Zeitplan erstellen | 0.12d | 2016-09-02 11:00 | 2016-09-02 12:00 | 27 | 18.81d | 0d | LN; SS | 2h |
| 29 | 4.4 | Projektdefinition schreiben | 0.25d | 2016-09-02 13:00 | 2016-09-02 15:00 | 28 | 18.81d | 0d | LN | 2h |
| 30 | 5 | **Entwurf** | 0.62d | 2016-09-02 15:00 | 2016-09-05 11:00 |  | 18.81d |  |  | 7h |
| 31 | 5.1 | Programmablauf beschreiben | 0.38d | 2016-09-02 15:00 | 2016-09-05 09:00 | 29 | 18.81d | 0d | LN | 3h |
| 32 | 5.2 | Grobe Skizzen von UI anfertigen | 0.25d | 2016-09-05 09:00 | 2016-09-05 11:00 | 31 | 18.81d | 0d | SS | 2h |
| 33 | 5.3 | Datenmodell erstellen | 0.25d | 2016-09-05 09:00 | 2016-09-05 11:00 | 31 | 20.12d |  | LN | 2h |
| 34 | 6 | **Konzeption** | 1.31d? | 2016-09-05 11:00 | 2016-09-06 14:30 |  | 18.81d |  |  | 11h |
| 35 | 6.1 | **Skizzen erstellen** | 1.12d? | 2016-09-05 11:00 | 2016-09-06 12:00 |  | 18.81d |  |  | 9h |
| 36 | 6.1.1 | Anmeldebildschirm | 0.12d? | 2016-09-05 11:00 | 2016-09-05 12:00 | 32 | 18.81d | 0d | SS | 1h |
| 37 | 6.1.2 | Registrierungsbildschirm | 0.12d? | 2016-09-05 13:00 | 2016-09-05 14:00 | 36 | 18.81d | 0d | SS | 1h |
| 38 | 6.1.3 | Hauptmaske | 0.12d? | 2016-09-05 14:00 | 2016-09-05 15:00 | 37 | 18.81d | 0d | SS | 1h |
| 39 | 6.1.4 | Teamverwaltungsansicht | 0.12d? | 2016-09-05 15:00 | 2016-09-05 16:00 | 38 | 18.81d | 0d | SS | 1h |
| 40 | 6.1.5 | Board-Einstellungen(Gruppenleiter) | 0.12d? | 2016-09-05 16:00 | 2016-09-05 17:00 | 39 | 18.81d | 0d | SS | 1h |
| 41 | 6.1.6 | To-Do-Ansicht | 0.12d? | 2016-09-06 08:00 | 2016-09-06 09:00 | 40 | 18.81d | 0d | SS | 1h |
| 42 | 6.1.7 | In-Progress-Ansicht | 0.12d? | 2016-09-06 09:00 | 2016-09-06 10:00 | 41 | 18.81d | 0d | SS | 1h |
| 43 | 6.1.8 | Done-Ansicht | 0.12d? | 2016-09-06 10:00 | 2016-09-06 11:00 | 42 | 18.81d | 0d | SS | 1h |
| 44 | 6.1.9 | Einzel Ticket-Ansicht | 0.12d | 2016-09-06 11:00 | 2016-09-06 12:00 | 43 | 18.81d | 0d | SS | 1h |
| 45 | 6.2 | **Standards festlegen** | 0.19d? | 2016-09-06 13:00 | 2016-09-06 14:30 |  | 18.81d |  |  | 2h |
| 46 | 6.2.1 | GUI Farben | 0.06d? | 2016-09-06 13:00 | 2016-09-06 13:30 | 44 | 18.81d | 0d | SS | 0.5h |
| 47 | 6.2.2 | Codestandards | 0.06d? | 2016-09-06 13:30 | 2016-09-06 14:00 | 46 | 18.81d | 0d | LN | 0.5h |
| 48 | 6.2.3 | Verwendete Technologien | 0.06d? | 2016-09-06 14:00 | 2016-09-06 14:30 | 47 | 18.81d |  | LN; SS | 1h |

| ID | WBS | Task | Type | Duration | Start | Finish | Predecessors | Total slack | Free slack | Constraint | Resources | Work |
| --- | --- | --- | --- | --- | --- | --- | --- | --- | --- | --- | --- | --- |
| 49 | 7 | **Realisierung** |  | 13.5d? | 2016-09-14 08:00 | 2016-10-03 12:00 |  | 0d |  |  |  | 69h |
| 50 | 7.1 | Beginn Realisierung | milestone | 0d | 2016-09-14 08:00 | 2016-09-14 08:00 |  | 5.12d | 0d | start no earlier than 2016-09-14 08:00 |  |  |
| 51 | 7.2 | **Frontend implementieren** |  | 11.25d? | 2016-09-14 10:00 | 2016-09-29 12:00 |  | 0d |  |  |  | 51h |
| 52 | 7.2.1 | Anmeldebildschirm |  | 0.19d? | 2016-09-14 10:00 | 2016-09-14 11:30 | 50, 22 | 4.88d | 0d |  | SS | 1.5h |
| 53 | 7.2.2 | Anmeldebildschirm Logik |  | 0.38d? | 2016-09-14 11:30 | 2016-09-14 15:30 | 52 | 4.88d | 0d |  | SS | 3h |
| 54 | 7.2.3 | Registrierungsbildschirm |  | 0.19d? | 2016-09-14 15:30 | 2016-09-14 17:00 | 53 | 4.88d | 1d |  | SS | 1.5h |
| 55 | 7.2.4 | Registrierungsbildschirm Logik |  | 0.25d? | 2016-09-16 08:00 | 2016-09-16 10:00 | 54, 15 | 3.88d | 0d |  | SS | 2h |
| 56 | 7.2.5 | Hauptmaske |  | 0.25d? | 2016-09-16 10:00 | 2016-09-16 12:00 | 55 | 3.88d | 0d |  | SS | 2h |
| 57 | 7.2.6 | Hauptmaske Logik |  | 0.5d? | 2016-09-16 13:00 | 2016-09-16 17:00 | 56 | 3.88d | 0d |  | SS | 4h |
| 58 | 7.2.7 | Teamverwaltungsansicht |  | 0.5d? | 2016-09-19 08:00 | 2016-09-19 12:00 | 57 | 3.88d | 1.75d |  | SS | 4h |
| 59 | 7.2.8 | Teamverwaltungsansicht Logik |  | 0.75d? | 2016-09-21 10:00 | 2016-09-21 17:00 | 58, 16, 23 | 2.12d | 1d |  | SS | 6h |
| 60 | 7.2.9 | Board-Einstellungen |  | 0.25d? | 2016-09-23 08:00 | 2016-09-23 10:00 | 59, 17 | 1.12d | 0d |  | SS | 2h |
| 61 | 7.2.10 | Board-Einstellungen Logik |  | 0.25d? | 2016-09-23 10:00 | 2016-09-23 12:00 | 60 | 1.12d | 0d |  | SS | 2h |
| 62 | 7.2.11 | To-Do-Ansicht |  | 0.25d? | 2016-09-23 13:00 | 2016-09-23 15:00 | 61 | 1.12d | 0d |  | SS | 2h |
| 63 | 7.2.12 | To-Do-Ansicht Logik |  | 0.38d? | 2016-09-23 15:00 | 2016-09-26 09:00 | 62 | 1.12d | 0d |  | SS | 3h |
| 64 | 7.2.13 | In-Progress-Ansicht |  | 0.25d? | 2016-09-26 09:00 | 2016-09-26 11:00 | 63 | 1.12d | 0d |  | SS | 2h |
| 65 | 7.2.14 | In-Progress-Ansicht Logik |  | 0.38d? | 2016-09-26 11:00 | 2016-09-26 15:00 | 64 | 1.12d | 0d |  | SS | 3h |
| 66 | 7.2.15 | Done-Ansicht |  | 0.12d? | 2016-09-26 15:00 | 2016-09-26 16:00 | 65 | 1.12d |  |  | SS | 1h |
| 67 | 7.2.16 | Done-Ansicht Logik |  | 0.25d? | 2016-09-28 08:00 | 2016-09-28 10:00 | 66, 18 | 0d |  |  | SS | 2h |
| 68 | 7.2.17 | Einzel Ticket-Ansicht |  | 0.5d | 2016-09-28 10:00 | 2016-09-28 15:00 | 67 | 0d |  |  | SS | 4h |
| 69 | 7.2.18 | Einzel Ticket-Ansicht Logik |  | 0.75d | 2016-09-28 15:00 | 2016-09-29 12:00 | 68 | 0d |  |  | SS | 6h |
| 70 | 7.3 | **Backend implementieren** |  | 13.5d? | 2016-09-14 08:00 | 2016-10-03 12:00 |  | 0d |  |  |  | 18h |
| 71 | 7.3.1 | Datenbankmodell umsetzen |  | 0.25d? | 2016-09-14 08:00 | 2016-09-14 10:00 | 50 | 13.25d |  |  | LN | 2h |
| 72 | 7.3.2 | Entity Framework umsetzen |  | 0.75d? | 2016-09-29 13:00 | 2016-09-30 10:00 | 51 | 0d |  |  | LN | 6h |
| 73 | 7.3.3 | Routen implementieren |  | 1.25d | 2016-09-30 10:00 | 2016-10-03 12:00 | 72 | 0d |  |  | LN | 10h |

| ID | WBS | Task | Type | Duration | Start | Finish | Predecessors | Total slack | Free slack | Constraint | Resources | Work |
| --- | --- | --- | --- | --- | --- | --- | --- | --- | --- | --- | --- | --- |
| 74 | 8 | **Assets** |  | 1d | 2016-08-30 08:00 | 2016-08-30 17:00 |  | 22.62d |  |  |  | 1h |
| 75 | 8.1 | Logo erstellen/besorgen |  | 1d | 2016-08-30 08:00 | 2016-08-30 17:00 |  | 22.62d | 21d |  |  | 1h |
| 76 | 9 | **Präsentation** |  | 1.5d? | 2016-09-29 08:00 | 2016-09-30 12:00 |  | 1d |  |  |  | 14h |
| 77 | 9.1 | Präsentation erstellen |  | 0.38d? | 2016-09-29 08:00 | 2016-09-29 11:00 | 75 | 1.62d | 0.62d | start no earlier than 2016-09-29 08:00 | LN; SS | 6h |
| 78 | 9.2 | Präsentation halten |  | 0.5d | 2016-09-30 08:00 | 2016-09-30 12:00 | 77 | 1d |  | start no earlier than 2016-09-30 08:00 | LN; SS | 8h |
| 79 | 10 | Projekt Ende | milestone | 0d | 2016-09-30 08:00 | 2016-09-30 08:00 |  | 1.5d |  | start no earlier than 2016-09-30 08:00 |  |  |
